# Softtech PİP Şablonu

Schedule from MS Project, 2016-04-04 to 2018-02-28, costs in TL, A marks actual dates.

## Calendars

- Standard: Mon-Fri 08:00-12:00, 13:00-17:00; Sat-Sun off.

## Resources

| Resource | Rate |
| --- | --- |
| Oktay Ardeniz | 1 |
| Serhat Değirmenci | 1 |
| Medine Yılmaz | 1 |
| Murat Bayram | 1 |
| Tülay Akarsu | 1 |
| Mehmet Emin Kahyatepe | 1 |
| Fazlı Ayan | 1 |
| Gülten Topal | 1 |
| Bilgen Ersoy | 1 |
| Engin Aydoğdu | 1 |
| İLHAN ÖZER | 1 |
| Ali Savran | 1 |
| OYA SÜER | 1 |
| OSMAN DEMİRTAŞ | 1 |
| ORÇUN ŞAKAR | 1 |

## Schedule

| ID | WBS | Task | Type | Duration | Start | Finish | Complete | Remaining | Total slack | Constraint | Resources | Work | Actual work | Cost | Issue Key | Project Key | Issue Priority | Issue Status | Teslimat |
| --- | --- | --- | --- | --- | --- | --- | --- | --- | --- | --- | --- | --- | --- | --- | --- | --- | --- | --- | --- |
| 1 | 1 | **Tek Pencere Sistemi** |  | 497d? | 2016-04-04 A | 2018-02-28 | 10% | 445.32d? | 0d |  |  | 3872h | 1856h | 2,016 | P6009-1 | P6009 | Major | Proje Oluşturuldu |  |
| 2 | 1.1 | RPM Geçmiş Kayıtlar |  | 29.24d? | 2016-04-04 A | 2016-05-13 | 99% | 0d? | 0d | finish no earlier than 2017-10-31 |  | 1856h | 1856h |  | SKIP | P6009 |  |  |  |
| 3 | 1.2 | **Yönetim** |  | 43d? | 2017-11-01 | 2017-12-29 |  |  | 42d |  |  | 344h |  | 344 | SKIP | P6009 |  |  |  |
| 4 | 1.2.1 | Proje Yönetim Faaliyetleri |  | 43d? | 2017-11-01 | 2017-12-29 |  |  | 42d | start no earlier than 2017-11-01 | Serhat Değirmenci | 344h |  | 344 | P6009-4 | P6009 |  | AÇIK | Yönetim |
| 5 | 1.2.2 | Kapsam Belirleme | milestone | 0d? | 2017-11-01 | 2017-11-01 |  |  | 85d | start no earlier than 2017-11-01 | Serhat Değirmenci |  |  |  | P6009-5 | P6009 |  | AÇIK | Yönetim |
| 6 | 1.3 | **Şube, Internet, Pega Entegrasyonu** |  | 148d? | 2017-07-10 | 2018-01-31 |  |  | 19d |  |  | 808h |  | 808 | P6009-2 | P6009 |  | PLANLANIYOR |  |
| 7 | 1.3.1 | **Milestones** |  | 107d? | 2017-07-10 | 2017-12-06 |  |  | 60d |  |  |  |  |  | SKIP | P6009 |  |  |  |
| 8 | 1.3.1.1 | İGG | milestone | 0d | 2017-07-10 | 2017-07-10 |  |  | 409d | start no earlier than 2017-07-10 | Serhat Değirmenci |  |  |  | SKIP | P6009 |  |  |  |
| 9 | 1.3.1.2 | TGG | milestone | 0d? | 2017-07-24 | 2017-07-24 |  |  | 399d | start no earlier than 2017-07-24 | Serhat Değirmenci |  |  |  | SKIP | P6009 |  |  |  |
| 10 | 1.3.1.3 | THOGG | milestone | 0d? | 2017-10-10 | 2017-10-10 |  |  | 343d | start no earlier than 2017-10-10 | Serhat Değirmenci |  |  |  | SKIP | P6009 |  |  |  |
| 11 | 1.3.1.4 | ÜHOGG | milestone | 0d? | 2017-12-06 | 2017-12-06 |  |  | 302d | start no earlier than 2017-12-06 | Serhat Değirmenci |  |  |  | SKIP | P6009 |  |  |  |
| 12 | 1.3.2 | **Analiz** |  | 4d? | 2017-11-01 | 2017-11-06 |  |  | 81d |  |  | 32h |  | 32 | SKIP | P6009 |  |  |  |
| 13 | 1.3.2.1 | Analiz |  | 4d? | 2017-11-01 | 2017-11-06 |  |  | 81d | start no earlier than 2017-11-01 | ORÇUN ŞAKAR | 32h |  | 32 | P6009-6 | P6009 |  | AÇIK | P6009-2 |
| 14 | 1.3.3 | **Geliştirme** |  | 40d? | 2017-11-01 | 2017-12-26 |  |  | 45d |  |  | 436h |  | 436 | SKIP | P6009 |  |  |  |
| 15 | 1.3.3.1 | Geliştirme |  | 6.5d? | 2017-11-01 | 2017-11-09 |  |  | 78.5d | start no earlier than 2017-11-01 | Serhat Değirmenci | 52h |  | 52 | P6009-7 | P6009 |  | AÇIK | P6009-2 |
| 16 | 1.3.3.2 | Geliştirme-Internet |  | 8d? | 2017-11-01 | 2017-11-10 |  |  | 77d | start no earlier than 2017-11-01 | Serhat Değirmenci | 64h |  | 64 | P6009-8 | P6009 |  | AÇIK | P6009-2 |
| 17 | 1.3.3.3 | Geliştirme-Pega |  | 40d? | 2017-11-01 | 2017-12-26 |  |  | 45d | start no earlier than 2017-11-01 | Serhat Değirmenci | 320h |  | 320 | P6009-16 | P6009 |  | AÇIK | P6009-2 |
| 18 | 1.3.4 | **Test** |  | 42.5d? | 2017-11-01 | 2017-12-29 |  |  | 42.5d |  |  | 340h |  | 340 | SKIP | P6009 |  |  |  |
| 19 | 1.3.4.1 | Test |  | 42.5d? | 2017-11-01 | 2017-12-29 |  |  | 42.5d | start no earlier than 2017-11-01 | Bilgen Ersoy | 340h |  | 340 | P6009-9 | P6009 |  | AÇIK | P6009-2 |
| 20 | 1.3.5 | **Geçiş** |  | 0d? | 2018-01-31 | 2018-01-31 |  |  | 19d |  |  |  |  |  | SKIP | P6009 |  |  |  |
| 21 | 1.3.5.1 | İzleme ve Yaygınlaşma | milestone | 0d? | 2018-01-31 | 2018-01-31 |  |  | 19d | finish no earlier than 2018-01-31 | Serhat Değirmenci |  |  |  | P6009-10 | P6009 |  | AÇIK | P6009-2 |
| 22 | 1.4 | **NYDO Entegrasyonu** |  | 107d? | 2017-10-02 | 2018-02-28 |  |  | 0d |  |  | 864h |  | 864 | P6009-3 | P6009 |  | PLANLANIYOR |  |
| 23 | 1.4.1 | **Milestones** |  | 77d? | 2017-10-02 | 2018-01-17 |  |  | 30d |  |  |  |  |  | SKIP | P6009 |  |  |  |
| 24 | 1.4.1.1 | İGG | milestone | 0d | 2017-10-02 | 2017-10-02 |  |  | 349d | start no earlier than 2017-10-02 | Serhat Değirmenci |  |  |  | SKIP | P6009 |  |  |  |
| 25 | 1.4.1.2 | TGG | milestone | 0d? | 2017-10-16 | 2017-10-16 |  |  | 339d | start no earlier than 2017-10-16 | Serhat Değirmenci |  |  |  | SKIP | P6009 |  |  |  |
| 26 | 1.4.1.3 | THOGG | milestone | 0d? | 2017-12-01 | 2017-12-01 |  |  | 305d | start no earlier than 2017-12-01 | Serhat Değirmenci |  |  |  | SKIP | P6009 |  |  |  |
| 27 | 1.4.1.4 | ÜHOGG | milestone | 0d? | 2018-01-17 | 2018-01-17 |  |  | 272d | start no earlier than 2018-01-17 | Serhat Değirmenci |  |  |  | SKIP | P6009 |  |  |  |

| ID | WBS | Task | Type | Duration | Start | Finish | Total slack | Constraint | Resources | Work | Cost | Issue Key | Project Key | Issue Status | Teslimat |
| --- | --- | --- | --- | --- | --- | --- | --- | --- | --- | --- | --- | --- | --- | --- | --- |
| 28 | 1.4.2 | **Analiz** |  | 18d? | 2017-11-01 | 2017-11-24 | 67d |  |  | 144h | 144 | SKIP | P6009 |  |  |
| 29 | 1.4.2.1 | Analiz |  | 18d? | 2017-11-01 | 2017-11-24 | 67d | start no earlier than 2017-11-01 | ORÇUN ŞAKAR | 144h | 144 | P6009-11 | P6009 | AÇIK | P6009-3 |
| 30 | 1.4.3 | **Geliştirme** |  | 30d? | 2017-11-01 | 2017-12-12 | 55d |  |  | 480h | 480 | SKIP | P6009 |  |  |
| 31 | 1.4.3.1 | Geliştirme |  | 30d? | 2017-11-01 | 2017-12-12 | 55d | start no earlier than 2017-11-01 | Serhat Değirmenci | 240h | 240 | P6009-12 | P6009 | AÇIK | P6009-3 |
| 32 | 1.4.3.2 | Geliştirme-NYDO |  | 30d? | 2017-11-01 | 2017-12-12 | 55d | start no earlier than 2017-11-01 | Serhat Değirmenci | 240h | 240 | P6009-13 | P6009 | AÇIK | P6009-3 |
| 33 | 1.4.4 | **Test** |  | 30d? | 2017-12-01 | 2018-01-11 | 33d |  |  | 240h | 240 | SKIP | P6009 |  |  |
| 34 | 1.4.4.1 | Test |  | 30d? | 2017-12-01 | 2018-01-11 | 33d | start no earlier than 2017-12-01 | Bilgen Ersoy | 240h | 240 | P6009-14 | P6009 | AÇIK | P6009-3 |
| 35 | 1.4.5 | **Geçiş** |  | 0d? | 2018-02-28 | 2018-02-28 | 0d |  |  |  |  | SKIP | P6009 |  |  |
| 36 | 1.4.5.1 | İzleme ve Yaygınlaşma | milestone | 0d? | 2018-02-28 | 2018-02-28 | 0d | start no earlier than 2018-02-28 | Serhat Değirmenci |  |  | P6009-15 | P6009 | AÇIK | P6009-3 |
